# Business Intelligence

How a schedule from MS Project changed from version to version. A marks actual dates.

## Version 1 (saved 2020-04-17, file Time_Management.mpp)

Note of the change: Adding MS Project Files

| ID | WBS | Task | Duration | Start | Finish | Predecessors | Total float |
| --- | --- | --- | --- | --- | --- | --- | --- |
| 1 | 1 | **SPM_Project_BusinessIntelligence** | 571d | 2020-06-01 | 2022-08-08 |  | 0d |
| 2 | 1.1 | **Project Initiation** | 87d | 2020-06-01 | 2020-09-29 |  | 0d |
| 3 |  | Develop project charter | 21d | 2020-06-01 | 2020-06-29 |  | 0d |
| 4 |  | Develop Statement Of Work | 24d | 2020-06-30 | 2020-07-31 | 3 | 0d |
| 5 |  | Develop preliminary scope development | 20d | 2020-08-03 | 2020-08-28 | 3, 4 | 0d |
| 6 |  | Develop preliminary architectural model | 22d | 2020-08-31 | 2020-09-29 | 3, 4, 5 | 0d |
| 7 |  | Project initiation complete | 0d | 2020-09-29 | 2020-09-29 | 3, 4, 5, 6 | 0d |
| 8 | 1.2 | **Project plan** | 135d | 2020-09-30 | 2021-04-06 |  | 0d |
| 9 |  | Develop scope management plan | 17d | 2020-09-30 | 2020-10-22 | 2 | 0d |
| 10 |  | Develop change management plan | 44d | 2020-10-23 | 2020-12-23 | 9 | 0d |
| 11 |  | Develop initial descriptive budget | 45d | 2020-12-24 | 2021-02-24 | 9, 10 | 0d |
| 12 |  | Develop schedule | 28d | 2021-02-25 | 2021-04-05 | 10, 11 | 0d |
| 13 |  | Develop quality management plan | 37d | 2020-09-30 | 2020-11-19 | 2 | 46d |
| 14 |  | Develop human resource plan | 18d | 2020-12-24 | 2021-01-18 | 10, 13 | 22d |
| 15 |  | Develop risk management plan | 33d | 2021-01-19 | 2021-03-04 | 10, 14 | 22d |
| 16 |  | Project plan complete | 1d | 2021-04-06 | 2021-04-06 | 9, 10, 11, 12, 13, 14, 15 | 0d |
| 17 | 1.3 | **Project Execution** | 348d | 2021-04-07 | 2022-08-05 |  | 0d |
| 18 | 1.3.1 | **Release 1** | 109d | 2021-04-07 | 2021-09-06 |  | 0d |
| 19 |  | Analysis phase | 28d | 2021-04-07 | 2021-05-14 | 8 | 0d |
| 20 |  | Design phase | 28d | 2021-05-17 | 2021-06-23 | 19 | 0d |
| 21 |  | Construction phase | 25d | 2021-06-24 | 2021-07-28 | 20 | 0d |
| 22 |  | Validation phase | 15d | 2021-07-29 | 2021-08-18 | 21 | 0d |
| 23 |  | Deployment phase | 10d | 2021-08-19 | 2021-09-01 | 22 | 0d |
| 24 |  | Closeout | 3d | 2021-09-02 | 2021-09-06 | 23 | 0d |
| 25 |  | Release 1 Complete | 0d | 2021-09-06 | 2021-09-06 | 24 | 0d |
| 26 | 1.3.2 | **Release 2** | 94d | 2021-09-07 | 2022-01-14 |  | 0d |
| 27 |  | Analysis phase | 26d | 2021-09-07 | 2021-10-12 | 18 | 0d |
| 28 |  | Design phase | 26d | 2021-10-13 | 2021-11-17 | 27 | 0d |
| 29 |  | Construction phase | 23d | 2021-11-18 | 2021-12-20 | 28 | 0d |
| 30 |  | Validation phase | 12d | 2021-12-21 | 2022-01-05 | 29 | 0d |
| 31 |  | Deployment phase | 5d | 2022-01-06 | 2022-01-12 | 30 | 0d |
| 32 |  | Closeout | 2d | 2022-01-13 | 2022-01-14 | 31 | 0d |
| 33 |  | Release 2 Complete | 0d | 2022-01-14 | 2022-01-14 | 32 | 0d |
| 34 | 1.3.3 | **Release 3** | 79d | 2022-01-17 | 2022-05-05 |  | 0d |
| 35 |  | Analysis phase | 22d | 2022-01-17 | 2022-02-15 | 26 | 0d |
| 36 |  | Design phase | 22d | 2022-02-16 | 2022-03-17 | 35 | 0d |
| 37 |  | Construction phase | 20d | 2022-03-18 | 2022-04-14 | 36 | 0d |
| 38 |  | Validation phase | 10d | 2022-04-15 | 2022-04-28 | 37 | 0d |
| 39 |  | Deployment phase | 4d | 2022-04-29 | 2022-05-04 | 38 | 0d |
| 40 |  | Closeout | 1d | 2022-05-05 | 2022-05-05 | 39 | 0d |
| 41 |  | Release 3 Complete | 0d | 2022-05-05 | 2022-05-05 | 40 | 0d |
| 42 | 1.3.4 | **Release 4** | 66d | 2022-05-06 | 2022-08-05 |  | 0d |
| 43 |  | Analysis phase | 18d | 2022-05-06 | 2022-05-31 | 34 | 0d |
| 44 |  | Design phase | 18d | 2022-06-01 | 2022-06-24 | 43 | 0d |
| 45 |  | Construction phase | 15d | 2022-06-27 | 2022-07-15 | 44 | 0d |
| 46 |  | Validation phase | 10d | 2022-07-18 | 2022-07-29 | 45 | 0d |
| 47 |  | Deployment phase | 4d | 2022-08-01 | 2022-08-04 | 46 | 0d |
| 48 |  | Closeout | 1d | 2022-08-05 | 2022-08-05 | 47 | 0d |
| 49 |  | Release 4 Complete | 0d | 2022-08-05 | 2022-08-05 | 48 | 0d |
| 50 |  | Execution complete | 0d | 2022-08-05 | 2022-08-05 | 18, 26, 34, 42 | 0d |
| 51 |  | Project Closeout | 1d | 2022-08-08 | 2022-08-08 | 17 | 0d |
| 52 |  | Project Complete | 0d | 2022-08-08 | 2022-08-08 | 51 | 0d |

## Version 2 (saved 2020-04-18, file Cost_Management.mpp)

Note of the change: Adding MS Project Files

Last finish stays 2022-08-08. Complete tasks 0 → 13.

Changed:

| ID | Task | Start | Finish | Complete | Total float |
| --- | --- | --- | --- | --- | --- |
| 1 | **SPM_Project_BusinessIntelligence** | 2020-06-01 A |  | 0% → 50% |  |
| 2 | **Project Initiation** | 2020-06-01 A | 2020-09-29 A | 0% → 100% | 0d → none |
| 3 | Develop project charter | 2020-06-01 A | 2020-06-29 A | 0% → 100% | 0d → none |
| 4 | Develop Statement Of Work | 2020-06-30 A | 2020-07-31 A | 0% → 100% | 0d → none |
| 5 | Develop preliminary scope development | 2020-08-03 A | 2020-08-28 A | 0% → 100% | 0d → none |
| 6 | Develop preliminary architectural model | 2020-08-31 A | 2020-09-29 A | 0% → 100% | 0d → none |
| 7 | Project initiation complete | 2020-09-29 A | 2020-09-29 A | 0% → 100% | 0d → none |
| 8 | **Project plan** | 2020-09-30 A | 2021-04-06 A | 0% → 100% | 0d → none |
| 9 | Develop scope management plan | 2020-09-30 A | 2020-10-22 A | 0% → 100% | 0d → none |
| 10 | Develop change management plan | 2020-10-23 A | 2020-12-23 A | 0% → 100% | 0d → none |
| 11 | Develop initial descriptive budget | 2020-12-24 A | 2021-02-24 A | 0% → 100% | 0d → none |
| 12 | Develop schedule | 2021-02-25 A | 2021-04-05 A | 0% → 100% | 0d → none |
| 13 | Develop quality management plan | 2020-09-30 A | 2020-11-19 A | 0% → 100% | 46d → none |
| 14 | Develop human resource plan | 2020-12-24 A | 2021-01-18 A | 0% → 100% | 22d → none |
| 15 | Develop risk management plan | 2021-01-19 A | 2021-03-04 A | 0% → 100% | 22d → none |
| 16 | Project plan complete | 2021-04-06 A | 2021-04-06 A | 0% → 100% | 0d → none |
| 17 | **Project Execution** | 2021-04-07 A |  | 0% → 6% |  |
| 18 | **Release 1** | 2021-04-07 A |  | 0% → 18% |  |
| 19 | Analysis phase | 2021-04-07 A |  | 0% → 70% |  |

## Version 3 (saved 2020-04-18, file Risk_Management.mpp)

Note of the change: Adding MS Project Files

Last finish 2022-08-08 → 2022-07-18 (-21d).

Changed:

| ID | Task | Start | Finish | Duration | Complete | Other |
| --- | --- | --- | --- | --- | --- | --- |
| 1 | **SPM_Project_BusinessIntelligence** |  | 2022-08-08 → 2022-07-18 (-21d) | 571d → 555.91d | 50% → 51% | baseline start none → 2020-06-01; baseline finish none → 2022-08-08 |
| 2 | **Project Initiation** |  |  |  |  | baseline start none → 2020-06-01; baseline finish none → 2020-09-29 |
| 3 | Develop project charter |  |  |  |  | baseline start none → 2020-06-01; baseline finish none → 2020-06-29 |
| 4 | Develop Statement Of Work |  |  |  |  | baseline start none → 2020-06-30; baseline finish none → 2020-07-31 |
| 5 | Develop preliminary scope development |  |  |  |  | baseline start none → 2020-08-03; baseline finish none → 2020-08-28 |
| 6 | Develop preliminary architectural model |  |  |  |  | baseline start none → 2020-08-31; baseline finish none → 2020-09-29 |
| 7 | Project initiation complete |  |  |  |  | baseline start none → 2020-09-29; baseline finish none → 2020-09-29 |
| 8 | **Project plan** |  |  |  |  | baseline start none → 2020-09-30; baseline finish none → 2021-04-06 |
| 9 | Develop scope management plan |  |  |  |  | baseline start none → 2020-09-30; baseline finish none → 2020-10-22 |
| 10 | Develop change management plan |  |  |  |  | baseline start none → 2020-10-23; baseline finish none → 2020-12-23 |
| 11 | Develop initial descriptive budget |  |  |  |  | baseline start none → 2020-12-24; baseline finish none → 2021-02-24 |
| 12 | Develop schedule |  |  |  |  | baseline start none → 2021-02-25; baseline finish none → 2021-04-05 |
| 13 | Develop quality management plan |  |  |  |  | baseline start none → 2020-09-30; baseline finish none → 2020-11-19 |
| 14 | Develop human resource plan |  |  |  |  | baseline start none → 2020-12-24; baseline finish none → 2021-01-18 |
| 15 | Develop risk management plan |  |  |  |  | baseline start none → 2021-01-19; baseline finish none → 2021-03-04 |
| 16 | Project plan complete |  |  |  |  | baseline start none → 2021-04-06; baseline finish none → 2021-04-06 |
| 17 | **Project Execution** |  | 2022-08-05 → 2022-07-15 (-21d) | 348d → 332.91d |  | baseline start none → 2021-04-07; baseline finish none → 2022-08-05 |
| 18 | **Release 1** |  | 2021-09-06 → 2021-08-31 (-6d) | 109d → 104.45d | 18% → 19% | baseline start none → 2021-04-07; baseline finish none → 2021-09-06 |
| 19 | Analysis phase |  |  |  |  | baseline start none → 2021-04-07; baseline finish none → 2021-05-14 |
| 20 | Design phase |  |  |  |  | baseline start none → 2021-05-17; baseline finish none → 2021-06-23 |
| 21 | Construction phase |  | 2021-07-28 → 2021-07-22 (-6d) | 25d → 20.45d |  | resources Developer1; Developer2; Developer3; Developer4; Developer5; Developer6; Developer7; Cellphone4; Desktop1; Desktop2; Desktop3; Desktop4; Laptop4; Laptop9; Laptop10; Laptop11; Technical Lead; Desktop5; Desktop6; Developer8 → Developer1; Developer2; Developer3; Developer4; Developer5; Developer6; Developer7; Cellphone4; Desktop1; Desktop2; Desktop3; Desktop4; Laptop4; Laptop9; Laptop10; Laptop11; Technical Lead; Desktop5; Desktop6; Developer8; Desktop7; Developer9; Developer10; Laptop13; baseline start none → 2021-06-24; baseline finish none → 2021-07-28 |
| 22 | Validation phase | 2021-07-29 → 2021-07-22 (-7d) | 2021-08-18 → 2021-08-12 (-6d) |  |  | baseline start none → 2021-07-29; baseline finish none → 2021-08-18 |
| 23 | Deployment phase | 2021-08-19 → 2021-08-12 (-7d) | 2021-09-01 → 2021-08-26 (-6d) |  |  | baseline start none → 2021-08-19; baseline finish none → 2021-09-01 |
| 24 | Closeout | 2021-09-02 → 2021-08-26 (-7d) | 2021-09-06 → 2021-08-31 (-6d) |  |  | baseline start none → 2021-09-02; baseline finish none → 2021-09-06 |
| 25 | Release 1 Complete | 2021-09-06 → 2021-08-31 (-6d) | 2021-09-06 → 2021-08-31 (-6d) |  |  | baseline start none → 2021-09-06; baseline finish none → 2021-09-06 |
| 26 | **Release 2** | 2021-09-07 → 2021-08-31 (-7d) | 2022-01-14 → 2022-01-04 (-10d) | 94d → 89.82d |  | baseline start none → 2021-09-07; baseline finish none → 2022-01-14 |
| 27 | Analysis phase | 2021-09-07 → 2021-08-31 (-7d) | 2021-10-12 → 2021-10-06 (-6d) |  |  | baseline start none → 2021-09-07; baseline finish none → 2021-10-12 |
| 28 | Design phase | 2021-10-13 → 2021-10-06 (-7d) | 2021-11-17 → 2021-11-11 (-6d) |  |  | baseline start none → 2021-10-13; baseline finish none → 2021-11-17 |
| 29 | Construction phase | 2021-11-18 → 2021-11-11 (-7d) | 2021-12-20 → 2021-12-08 (-12d) | 23d → 18.82d |  | resources Developer1; Developer2; Developer3; Developer4; Developer5; Developer6; Developer7; Cellphone4; Desktop1; Desktop2; Desktop3; Desktop4; Laptop4; Laptop9; Laptop10; Laptop11; Technical Lead; Desktop5; Desktop6; Developer8 → Developer1; Developer2; Developer3; Developer4; Developer5; Developer6; Developer7; Cellphone4; Desktop1; Desktop2; Desktop3; Desktop4; Laptop4; Laptop9; Laptop10; Laptop11; Technical Lead; Desktop5; Desktop6; Developer8; Desktop7; Developer9; Developer10; Laptop13; baseline start none → 2021-11-18; baseline finish none → 2021-12-20 |
| 30 | Validation phase | 2021-12-21 → 2021-12-08 (-13d) | 2022-01-05 → 2021-12-24 (-12d) |  |  | baseline start none → 2021-12-21; baseline finish none → 2022-01-05 |
| 31 | Deployment phase | 2022-01-06 → 2021-12-24 (-13d) | 2022-01-12 → 2021-12-31 (-12d) |  |  | baseline start none → 2022-01-06; baseline finish none → 2022-01-12 |
| 32 | Closeout | 2022-01-13 → 2021-12-31 (-13d) | 2022-01-14 → 2022-01-04 (-10d) |  |  | baseline start none → 2022-01-13; baseline finish none → 2022-01-14 |
| 33 | Release 2 Complete | 2022-01-14 → 2022-01-04 (-10d) | 2022-01-14 → 2022-01-04 (-10d) |  |  | baseline start none → 2022-01-14; baseline finish none → 2022-01-14 |
| 34 | **Release 3** | 2022-01-17 → 2022-01-04 (-13d) | 2022-05-05 → 2022-04-19 (-16d) | 79d → 75.36d |  | baseline start none → 2022-01-17; baseline finish none → 2022-05-05 |
| 35 | Analysis phase | 2022-01-17 → 2022-01-04 (-13d) | 2022-02-15 → 2022-02-03 (-12d) |  |  | baseline start none → 2022-01-17; baseline finish none → 2022-02-15 |
| 36 | Design phase | 2022-02-16 → 2022-02-03 (-13d) | 2022-03-17 → 2022-03-07 (-10d) |  |  | baseline start none → 2022-02-16; baseline finish none → 2022-03-17 |
| 37 | Construction phase | 2022-03-18 → 2022-03-07 (-11d) | 2022-04-14 → 2022-03-29 (-16d) | 20d → 16.36d |  | resources Developer1; Developer2; Developer3; Developer4; Developer5; Developer6; Developer7; Cellphone4; Desktop1; Desktop2; Desktop3; Desktop4; Laptop4; Laptop9; Laptop10; Laptop11; Technical Lead; Desktop5; Desktop6; Developer8 → Developer1; Developer2; Developer3; Developer4; Developer5; Developer6; Developer7; Cellphone4; Desktop1; Desktop2; Desktop3; Desktop4; Laptop4; Laptop9; Laptop10; Laptop11; Technical Lead; Desktop5; Desktop6; Developer8; Desktop7; Developer9; Developer10; Laptop13; baseline start none → 2022-03-18; baseline finish none → 2022-04-14 |
| 38 | Validation phase | 2022-04-15 → 2022-03-29 (-17d) | 2022-04-28 → 2022-04-12 (-16d) |  |  | baseline start none → 2022-04-15; baseline finish none → 2022-04-28 |
| 39 | Deployment phase | 2022-04-29 → 2022-04-12 (-17d) | 2022-05-04 → 2022-04-18 (-16d) |  |  | baseline start none → 2022-04-29; baseline finish none → 2022-05-04 |
| 40 | Closeout | 2022-05-05 → 2022-04-18 (-17d) | 2022-05-05 → 2022-04-19 (-16d) |  |  | baseline start none → 2022-05-05; baseline finish none → 2022-05-05 |
| 41 | Release 3 Complete | 2022-05-05 → 2022-04-19 (-16d) | 2022-05-05 → 2022-04-19 (-16d) |  |  | baseline start none → 2022-05-05; baseline finish none → 2022-05-05 |
| 42 | **Release 4** | 2022-05-06 → 2022-04-19 (-17d) | 2022-08-05 → 2022-07-15 (-21d) | 66d → 63.27d |  | baseline start none → 2022-05-06; baseline finish none → 2022-08-05 |
| 43 | Analysis phase | 2022-05-06 → 2022-04-19 (-17d) | 2022-05-31 → 2022-05-13 (-18d) |  |  | baseline start none → 2022-05-06; baseline finish none → 2022-05-31 |
| 44 | Design phase | 2022-06-01 → 2022-05-13 (-19d) | 2022-06-24 → 2022-06-08 (-16d) |  |  | baseline start none → 2022-06-01; baseline finish none → 2022-06-24 |
| 45 | Construction phase | 2022-06-27 → 2022-06-08 (-19d) | 2022-07-15 → 2022-06-24 (-21d) | 15d → 12.27d |  | resources Developer1; Developer2; Developer3; Developer4; Developer5; Developer6; Developer7; Cellphone4; Desktop1; Desktop2; Desktop3; Desktop4; Laptop4; Laptop9; Laptop10; Laptop11; Technical Lead; Desktop5; Desktop6; Developer8 → Developer1; Developer2; Developer3; Developer4; Developer5; Developer6; Developer7; Cellphone4; Desktop1; Desktop2; Desktop3; Desktop4; Laptop4; Laptop9; Laptop10; Laptop11; Technical Lead; Desktop5; Desktop6; Developer8; Desktop7; Developer9; Developer10; Laptop13; baseline start none → 2022-06-27; baseline finish none → 2022-07-15 |
| 46 | Validation phase | 2022-07-18 → 2022-06-24 (-24d) | 2022-07-29 → 2022-07-08 (-21d) |  |  | baseline start none → 2022-07-18; baseline finish none → 2022-07-29 |
| 47 | Deployment phase | 2022-08-01 → 2022-07-08 (-24d) | 2022-08-04 → 2022-07-14 (-21d) |  |  | baseline start none → 2022-08-01; baseline finish none → 2022-08-04 |
| 48 | Closeout | 2022-08-05 → 2022-07-14 (-22d) | 2022-08-05 → 2022-07-15 (-21d) |  |  | baseline start none → 2022-08-05; baseline finish none → 2022-08-05 |
| 49 | Release 4 Complete | 2022-08-05 → 2022-07-15 (-21d) | 2022-08-05 → 2022-07-15 (-21d) |  |  | baseline start none → 2022-08-05; baseline finish none → 2022-08-05 |
| 50 | Execution complete | 2022-08-05 → 2022-07-15 (-21d) | 2022-08-05 → 2022-07-15 (-21d) |  |  | baseline start none → 2022-08-05; baseline finish none → 2022-08-05 |
| 51 | Project Closeout | 2022-08-08 → 2022-07-15 (-24d) | 2022-08-08 → 2022-07-18 (-21d) |  |  | baseline start none → 2022-08-08; baseline finish none → 2022-08-08 |
| 52 | Project Complete | 2022-08-08 → 2022-07-18 (-21d) | 2022-08-08 → 2022-07-18 (-21d) |  |  | baseline start none → 2022-08-08; baseline finish none → 2022-08-08 |
